# new version

Schedule from MS Project, 2026-10-19 to 2027-03-01.

## Calendars

- Sappi Saiccor - Stormwater Infra: Mon-Fri 08:00-12:00, 13:00-17:00; Sat-Sun off. Exceptions (off unless hours are given): 2026-11-04 (National Local Elections), 2026-11-18 (Rain Day - November), 2026-11-25 (Rain Day - November), 2026-12-01 (Rain Day - December), 2026-12-09 (Rain Day - December), 2026-12-14 to 2027-01-04 (Builder Break(Includes Christmas, boxing day & new years day)), 2027-01-13 (Rain Day -27), 2027-01-27 (Rain Day -27), 2027-02-03 (Rain Day -27), 2027-02-17 (Rain Day -27), 2027-02-24 (Rain Day -27).

## Resources

| Resource |
| --- |
| s |

## Schedule

| ID | WBS | Task | Type | Duration | Start | Finish | Predecessors | Total slack | Free slack |
| --- | --- | --- | --- | --- | --- | --- | --- | --- | --- |
| 1 | 1 | **SAPPI SAICCOR - WOODYARD LOGISTIC UPGRADE - STOMRWATER INFRASTRUCTURE** |  | 70d | 2026-10-19 | 2027-03-01 |  | 0d |  |
| 2 | 1.1 | **KEY DATES** |  | 70d | 2026-10-19 | 2027-03-01 |  | 0d |  |
| 3 | 1.1.1 | **Contract** |  | 10d | 2026-10-19 | 2026-10-30 |  | 0d |  |
| 4 | 1.1.1.1 | Issued of the Letter Acceptance(By Employer) |  | 10d | 2026-10-19 | 2026-10-30 |  | 0d |  |
| 5 | 1.1.2 | **Commencement of Works** |  | 2d | 2026-11-02 | 2026-11-03 |  | 0d |  |
| 6 | 1.1.2.1 | Commencement of Date |  | 1d | 2026-11-02 | 2026-11-02 | 4 | 0d |  |
| 7 | 1.1.2.2 | Letter of Access to the Site |  | 1d | 2026-11-03 | 2026-11-03 | 6 | 0d |  |
| 8 | 1.1.3 | **Special Non- Working and Embarg Date** |  | 58d | 2026-11-03 | 2027-03-01 |  | 0d |  |
| 9 | 1.1.3.1 | Sunday - refer to the Calender | milestone | 0d | 2026-11-03 | 2026-11-03 | 7 | 57d | 0d |
| 10 | 1.1.3.2 | Public Holiday | milestone | 0d | 2026-11-03 | 2026-11-03 | 9 | 57d | 0d |
| 11 | 1.1.3.3 | Easter Weekend - refer to Calender | milestone | 0d | 2026-11-03 | 2026-11-03 | 10 | 57d |  |
| 12 | 1.1.3.4 | Contractor's Time Risk Allowance |  | 1d | 2027-03-01 | 2027-03-01 | 255, 11 | 0d |  |
| 13 | 1.1.4 | **Taking- Over Certificate** |  | 1d | 2027-03-01 | 2027-03-01 |  | 0d |  |
| 14 | 1.1.4.1 | Planned Completion Date |  | 1d | 2027-03-01 | 2027-03-01 | 256, 12FF | 0d |  |
| 15 | 1.2 | **Documentation, Mobisation and Appointments** |  | 15d | 2026-11-03 | 2026-11-26 |  | 1d |  |
| 16 | 1.2.1 | **Documentation** |  | 15d | 2026-11-03 | 2026-11-26 |  | 1d |  |
| 17 | 1.2.1.1 | **Documentation** |  | 7d | 2026-11-05 | 2026-11-13 |  | 0d |  |
| 18 | 1.2.1.1.1 | Docs required before Commencement : H& S |  | 7d | 2026-11-05 | 2026-11-13 | 7 | 0d |  |
| 19 | 1.2.1.1.2 | Docs required before Commencement : Proof of Payment Workmans Comp |  | 7d | 2026-11-05 | 2026-11-13 | 7, 18FF | 0d |  |
| 20 | 1.2.1.1.3 | Docs required before Commencement : Initial Programme |  | 7d | 2026-11-05 | 2026-11-13 | 7, 19FF | 0d |  |
| 21 | 1.2.1.1.4 | Docs required before Commencement : Bond and Insurances |  | 7d | 2026-11-05 | 2026-11-13 | 7, 20FF | 0d |  |
| 22 | 1.2.1.2 | **Mobilisation** |  | 15d | 2026-11-03 | 2026-11-26 |  | 44d |  |
| 23 | 1.2.1.2.1 | Contractor to Mobilise Plant and Personnel |  | 15d | 2026-11-03 | 2026-11-26 | 7SS, 19FF | 44d |  |
| 24 | 1.2.1.3 | **Quality Documentation** |  | 10d | 2026-11-05 | 2026-11-19 |  | 0d |  |
| 25 | 1.2.1.3.1 | Compile and Submit Construction Method Statements |  | 5d | 2026-11-05 | 2026-11-11 | 19SS, 21SS | 0d |  |
| 26 | 1.2.1.3.2 | Review and Approve Construction Method Statements |  | 5d | 2026-11-12 | 2026-11-19 | 25, 18FF | 0d |  |

| ID | WBS | Task | Duration | Start | Finish | Predecessors | Total slack | Free slack | Constraint |
| --- | --- | --- | --- | --- | --- | --- | --- | --- | --- |
| 27 | 1.2.2 | **Appointments** | 7d | 2026-11-05 | 2026-11-13 |  | 21d |  |  |
| 28 | 1.2.2.1 | **Sub-contractor Appointments** | 7d | 2026-11-05 | 2026-11-13 |  | 21d |  |  |
| 29 | 1.2.2.1.1 | Appoint Gabion Sub- contractor | 7d | 2026-11-05 | 2026-11-13 | 7 | 21d | 18d |  |
| 30 | 1.2.2.1.2 | Appoint Reinforcing Sub-contractor | 7d | 2026-11-05 | 2026-11-13 | 7 | 28d | 21d |  |
| 31 | 1.3 | **Engineering(and Contractor Fabrications Drawings)** | 1d | 2026-11-05 | 2026-11-05 |  | 20d |  |  |
| 32 | 1.3.1 | **Information Required to Commence(By Principal Agent)** | 1d | 2026-11-05 | 2026-11-05 |  | 20d |  |  |
| 33 | 1.3.1.1 | Info Reqd : All Civil 'Approved For Construction" | 1d | 2026-11-05 | 2026-11-05 | 7 | 20d | 0d |  |
| 34 | 1.4 | **PROCUREMENT and FABRICATION** | 15d | 2026-11-05 | 2026-11-27 |  | 21d |  |  |
| 35 | 1.4.1 | **Civil** | 15d | 2026-11-05 | 2026-11-27 |  | 21d |  |  |
| 36 | 1.4.1.1 | **Stormwater** | 14d | 2026-11-06 | 2026-11-27 |  | 20d |  |  |
| 37 | 1.4.1.1.1 | Vdrain : Procure Reinforcing - Foundations | 12d | 2026-11-06 | 2026-11-24 | 7FF, 33 | 20d | 0d |  |
| 38 | 1.4.1.1.2 | Hw: Procure Reinforcing Foundations | 12d | 2026-11-06 | 2026-11-24 | 37FF, 33 | 20d | 0d | start no earlier than 2026-05-07 |
| 39 | 1.4.1.1.3 | HW: Procure Reinforcing Walls | 12d | 2026-11-06 | 2026-11-24 | 38FF, 33 | 22d | 2d |  |
| 40 | 1.4.1.1.4 | SW : Procure 600D Concrete Pipe Class 100 D | 14d | 2026-11-06 | 2026-11-27 | 39FF, 33 | 20d | 19d |  |
| 41 | 1.4.1.2 | **Miscellaneous** | 14d | 2026-11-05 | 2026-11-26 |  | 41d |  |  |
| 42 | 1.4.1.2.1 | HW : Log and Bark Screen Structure steel | 14d | 2026-11-05 | 2026-11-26 | 7 | 41d |  |  |
| 43 | 1.5 | **Provisional Sums** | 54d | 2026-11-05 | 2027-02-22 |  | 1d |  |  |
| 44 | 1.5.1 | **Temporary works** | 24d | 2026-11-20 | 2027-01-20 |  | 0d |  |  |
| 45 | 1.5.1.1 | Implemented Traffic Management | 1d | 2027-01-20 | 2027-01-20 | 101FF, 20 | 18d |  |  |
| 46 | 1.5.1.2 | Existing Services(Provisional) | 5d | 2026-11-20 | 2026-11-27 | 57FF, 4, 54 | 0d |  |  |
| 47 | 1.5.2 | **Security and Safety** | 15d | 2026-11-05 | 2026-11-27 |  | 9d |  |  |
| 48 | 1.5.2.1 | Security | 15d | 2026-11-05 | 2026-11-27 | 7 | 9d |  |  |
| 49 | 1.5.3 | **Project Site Management** | 44d | 2026-11-20 | 2027-02-22 |  | 1d |  |  |
| 50 | 1.5.3.1 | Maintain roads - suppress dust | 44d | 2026-11-20 | 2027-02-22 | 54 | 1d |  |  |

| ID | WBS | Task | Duration | Start | Finish | Predecessors | Total slack | Free slack |
| --- | --- | --- | --- | --- | --- | --- | --- | --- |
| 51 | 1.6 | **Civil** | 48d | 2026-11-19 | 2027-02-26 |  | 0d |  |
| 52 | 1.6.1 | **Initial Works** | 5d | 2026-11-19 | 2026-11-26 |  | 0d |  |
| 53 | 1.6.1.1 | **Site Establishment for SS** | 5d | 2026-11-19 | 2026-11-26 |  | 0d |  |
| 54 | 1.6.1.1.1 | Prep work to fix up ground condition | 1d | 2026-11-19 | 2026-11-19 | 7FF, 20FF, 26FF | 0d |  |
| 55 | 1.6.1.1.2 | Install Contractor Site offices and connect service | 2d | 2026-11-19 | 2026-11-20 | 54SS, 48SS | 0d |  |
| 56 | 1.6.1.1.3 | Install Engineers Site Offices and connect services | 2d | 2026-11-19 | 2026-11-20 | 55SS | 0d |  |
| 57 | 1.6.1.1.4 | Connect Water and power supply | 2d | 2026-11-23 | 2026-11-24 | 56, 55 | 0d |  |
| 58 | 1.6.1.1.5 | Install Ablution Facilities | 1d | 2026-11-26 | 2026-11-26 | 57 | 0d |  |
| 59 | 1.6.1.1.6 | Temporary Parking for SS | 1d | 2026-11-26 | 2026-11-26 | 58SS | 0d |  |
| 60 | 1.6.1.2 | **Fence Line Removed by Sappi** | 5d | 2026-11-19 | 2026-11-26 |  | 0d |  |
| 61 | 1.6.1.2.1 | Sappi Remove Fence - Access | 5d | 2026-11-19 | 2026-11-26 | 7, 59FF | 0d |  |
| 62 | 1.6.2 | **EARTH DRAINAGE** | 19d | 2026-11-27 | 2027-01-19 |  | 0d |  |
| 63 | 1.6.2.1 | **Earth Drain 2 - North Side(River Side)** | 16d | 2026-11-27 | 2027-01-14 |  | 0d |  |
| 64 | 1.6.2.1.1 | **ED2-7 to ED 3-8 Deep cut(from 2.5m to 5.5m wide)** | 8d | 2026-11-27 | 2026-12-10 |  | 0d |  |
| 65 | 1.6.2.1.1.1 | ED 2 - Setting out - no mention in BOQ | 1d | 2026-11-27 | 2026-11-27 | 61, 46FF | 0d |  |
| 66 | 1.6.2.1.1.2 | ED 2 - Clearing & Grubbing- no mention in BOQ | 1d | 2026-11-30 | 2026-11-30 | 65FF+1d, 61 | 0d |  |
| 67 | 1.6.2.1.1.3 | ED 2 - Remove Topsoil- no mention in BOQ | 1d | 2026-12-02 | 2026-12-02 | 66FF+1d, 65 | 0d |  |
| 68 | 1.6.2.1.1.4 | ED 2 - Bulk Excavation Deep Cut - no mention in Boq | 2d | 2026-12-04 | 2026-12-07 | 67FS+1d | 0d |  |
| 69 | 1.6.2.1.1.5 | ED 2 - Trim and Shape Fall Sides | 2d | 2026-12-08 | 2026-12-10 | 68 | 0d |  |
| 70 | 1.6.2.1.2 | **ED2-1 to ED 3-8 Deep cut(600mm to width varies)** | 15d | 2026-11-30 | 2027-01-14 |  | 1d |  |
| 71 | 1.6.2.1.2.1 | ED 2 - Setting out - no mention in BOQ | 1d | 2026-11-30 | 2026-11-30 | 65 | 1d | 0d |
| 72 | 1.6.2.1.2.2 | ED 2 - Clearing & Grubbing- no mention in BOQ | 1d | 2026-12-02 | 2026-12-02 | 71 | 1d | 0d |
| 73 | 1.6.2.1.2.3 | ED 2 - Remove Topsoil- no mention in BOQ | 1d | 2026-12-03 | 2026-12-03 | 72 | 1d | 0d |
| 74 | 1.6.2.1.2.4 | ED 2 - Bulk Excavation Deep Cut - no mention in Boq | 2d | 2026-12-04 | 2026-12-07 | 73 | 1d |  |
| 75 | 1.6.2.1.2.5 | ED 2 - Trim and Shape Fall Sides | 2d | 2026-12-10 | 2026-12-11 | 69FF+1d, 74 | 0d |  |
| 76 | 1.6.2.1.2.6 | ED 2 - Prep surface & compaction for reno mattress | 2d | 2027-01-05 | 2027-01-06 | 75 | 3d | 0d |
| 77 | 1.6.2.1.2.7 | ED 2- Install Basket | 2d | 2027-01-07 | 2027-01-08 | 75, 76, 29 | 3d | 0d |
| 78 | 1.6.2.1.2.8 | ED 2 Placed Approved Rock | 5d | 2027-01-07 | 2027-01-14 | 77SS | 3d |  |

Notes:
- 66: This includes access made for tipper trucks

| ID | WBS | Task | Duration | Start | Finish | Predecessors | Total slack | Free slack |
| --- | --- | --- | --- | --- | --- | --- | --- | --- |
| 79 | 1.6.2.2 | **Earth Drain 1 - North Side(River Side)** | 18d | 2026-11-30 | 2027-01-19 |  | 0d |  |
| 80 | 1.6.2.2.1 | **ED3.8 to ED 1-1 Wide Cut** | 18d | 2026-11-30 | 2027-01-19 |  | 0d |  |
| 81 | 1.6.2.2.1.1 | ED 1 - Setting out - no mention in BOQ | 1d | 2026-11-30 | 2026-11-30 | 71SS | 2d | 0d |
| 82 | 1.6.2.2.1.2 | ED 1 - Clearing & Grubbing- no mention in BOQ | 1d | 2026-12-02 | 2026-12-02 | 81 | 4d | 0d |
| 83 | 1.6.2.2.1.3 | ED 1 - Remove Topsoil- no mention in BOQ | 1d | 2026-12-03 | 2026-12-03 | 82 | 4d | 0d |
| 84 | 1.6.2.2.1.4 | ED 1 - Bulk Excavation Deep Cut - no mention in Boq | 1d | 2026-12-04 | 2026-12-04 | 83 | 4d |  |
| 85 | 1.6.2.2.1.5 | ED 1 - Trim and Shape Fall Sides | 2d | 2027-01-05 | 2027-01-06 | 84, 75 | 0d |  |
| 86 | 1.6.2.2.1.6 | ED 1 - Prep surface & compaction for reno mattress | 1d | 2027-01-07 | 2027-01-07 | 85 | 0d |  |
| 87 | 1.6.2.2.1.7 | ED 1- Install Basket | 2d | 2027-01-08 | 2027-01-11 | 85, 86 | 0d |  |
| 88 | 1.6.2.2.1.8 | ED 1 Placed Approved Rock | 5d | 2027-01-12 | 2027-01-19 | 87, 78FF | 0d |  |
| 89 | 1.6.2.3 | **Earth Drain 3 - North Side(River Side)** | 17d | 2026-12-02 | 2027-01-19 |  | 0d |  |
| 90 | 1.6.2.3.1 | **ED3.8 to ED 3-1 Wide Cut** | 17d | 2026-12-02 | 2027-01-19 |  | 0d |  |
| 91 | 1.6.2.3.1.1 | ED 3 - Setting out - no mention in BOQ | 1d | 2026-12-02 | 2026-12-02 | 81 | 2d | 0d |
| 92 | 1.6.2.3.1.2 | ED 3 - Clearing & Grubbing- no mention in BOQ | 1d | 2026-12-03 | 2026-12-03 | 91 | 2d | 0d |
| 93 | 1.6.2.3.1.3 | ED 3 - Remove Topsoil- no mention in BOQ | 1d | 2026-12-04 | 2026-12-04 | 92, 91 | 2d | 0d |
| 94 | 1.6.2.3.1.4 | ED 3 - Bulk Excavation Deep Cut - no mention in Boq | 3d | 2026-12-07 | 2026-12-10 | 93 | 2d | 0d |
| 95 | 1.6.2.3.1.5 | ED 3 - Trim and Shape Fall Sides - | 2d | 2027-01-05 | 2027-01-06 | 94FS+1d | 2d | 0d |
| 96 | 1.6.2.3.1.6 | ED 3 - Prep surface & compaction for reno mattress | 1d | 2027-01-07 | 2027-01-07 | 95 | 2d | 0d |
| 97 | 1.6.2.3.1.7 | ED 3- Install Basket | 2d | 2027-01-08 | 2027-01-11 | 95, 96 | 2d |  |
| 98 | 1.6.2.3.1.8 | ED 3 Placed Approved Rock | 5d | 2027-01-12 | 2027-01-19 | 97SS, 88FF | 0d |  |
| 99 | 1.6.3 | **Northern Access Road** | 32d | 2027-01-05 | 2027-02-23 |  | 0d |  |
| 100 | 1.6.3.1 | **Temporary Diversion** | 1d | 2027-01-20 | 2027-01-20 |  | 0d |  |
| 101 | 1.6.3.1.1 | Divert Traffic to construct the Stormwater line Network 1 to 3 | 1d | 2027-01-20 | 2027-01-20 | 98 | 0d |  |
| 102 | 1.6.3.2 | **Stormwater Lines - Network 1** | 3d | 2027-01-21 | 2027-01-25 |  | 0d |  |
| 103 | 1.6.3.2.1 | Excavation | 2d | 2027-01-21 | 2027-01-22 | 101 | 0d |  |
| 104 | 1.6.3.2.2 | Bedding | 1d | 2027-01-21 | 2027-01-21 | 103SS | 1d | 0d |
| 105 | 1.6.3.2.3 | Lay 600D pipe | 1d | 2027-01-21 | 2027-01-21 | 104FF, 40 | 1d | 0d |
| 106 | 1.6.3.2.4 | Backfill & Compact Craddle 300mm | 1d | 2027-01-21 | 2027-01-21 | 105FF | 1d | 0d |
| 107 | 1.6.3.2.5 | Bedding Blanket Layer& compact in 300mm | 1d | 2027-01-22 | 2027-01-22 | 106 | 1d | 0d |
| 108 | 1.6.3.2.6 | Backfill & compact in 300mm layer 1 | 1d | 2027-01-25 | 2027-01-25 | 107 | 1d | 0d |
| 109 | 1.6.3.2.7 | Backfill & compact in 200mm layer 2 Clean Insitue | 1d | 2027-01-25 | 2027-01-25 | 108FF, 105 | 1d | 0d |
| 110 | 1.6.3.2.8 | Backfill& compact in 200mm layer 3 Clean Insitue | 1d | 2027-01-25 | 2027-01-25 | 109FF, 105 | 1d | 0d |
| 111 | 1.6.3.2.9 | Backfill& compact in 200mm layer 4 Clean Insitue | 1d | 2027-01-25 | 2027-01-25 | 110FF, 105 | 1d | 0d |

| ID | WBS | Task | Duration | Start | Finish | Predecessors | Total slack | Free slack |
| --- | --- | --- | --- | --- | --- | --- | --- | --- |
| 112 | 1.6.3.3 | **Stormwater Lines - Network 2** | 4d | 2027-01-21 | 2027-01-26 |  | 1d |  |
| 113 | 1.6.3.3.1 | Excavation | 2d | 2027-01-21 | 2027-01-22 | 103FF, 101 | 2d | 0d |
| 114 | 1.6.3.3.2 | Bedding | 1d | 2027-01-22 | 2027-01-22 | 113FF, 104 | 2d | 0d |
| 115 | 1.6.3.3.3 | Lay 600D pipe | 1d | 2027-01-22 | 2027-01-22 | 114FF, 105, 40 | 2d | 0d |
| 116 | 1.6.3.3.4 | Backfill & Compact Craddle 300mm | 1d | 2027-01-22 | 2027-01-22 | 115FF, 106 | 2d | 1d |
| 117 | 1.6.3.3.5 | Bedding Blanket Layer& compact in 300mm | 1d | 2027-01-25 | 2027-01-25 | 116FF, 107 | 1d | 0d |
| 118 | 1.6.3.3.6 | Backfill & compact in 300mm layer 1 | 1d | 2027-01-26 | 2027-01-26 | 117FF+1d, 108, 115 | 1d | 0d |
| 119 | 1.6.3.3.7 | Backfill & compact in 200mm layer 2 Clean Insitue | 1d | 2027-01-26 | 2027-01-26 | 118FF, 109, 115 | 1d | 0d |
| 120 | 1.6.3.3.8 | Backfill& compact in 200mm layer 3 Clean Insitue | 1d | 2027-01-26 | 2027-01-26 | 119FF, 110, 115 | 1d | 0d |
| 121 | 1.6.3.3.9 | Backfill& compact in 200mm layer 4 Clean Insitue | 1d | 2027-01-26 | 2027-01-26 | 120FF, 111, 115 | 1d |  |
| 122 | 1.6.3.4 | **Stormwater Lines - Network 3** | 4d | 2027-01-22 | 2027-01-28 |  | 0d |  |
| 123 | 1.6.3.4.1 | Excavation | 2d | 2027-01-22 | 2027-01-25 | 103FF+1d, 101 | 0d |  |
| 124 | 1.6.3.4.2 | Bedding | 1d | 2027-01-26 | 2027-01-26 | 123, 104 | 0d |  |
| 125 | 1.6.3.4.3 | Lay 600D pipe | 1d | 2027-01-26 | 2027-01-26 | 124FF, 105, 40 | 0d |  |
| 126 | 1.6.3.4.4 | Backfill & Compact Craddle 300mm | 1d | 2027-01-26 | 2027-01-26 | 125FF, 106 | 0d |  |
| 127 | 1.6.3.4.5 | Bedding Blanket Layer& compact in 300mm | 1d | 2027-01-26 | 2027-01-26 | 126FF, 107 | 0d |  |
| 128 | 1.6.3.4.6 | Backfill & compact in 300mm layer 1 | 1d | 2027-01-28 | 2027-01-28 | 127FF+1d, 108, 125 | 0d |  |
| 129 | 1.6.3.4.7 | Backfill & compact in 200mm layer 2 Clean Insitue | 1d | 2027-01-28 | 2027-01-28 | 128FF, 109, 125 | 0d |  |
| 130 | 1.6.3.4.8 | Backfill& compact in 200mm layer 3 Clean Insitue | 1d | 2027-01-28 | 2027-01-28 | 129FF, 110, 125 | 0d |  |
| 131 | 1.6.3.4.9 | Backfill& compact in 200mm layer 4 Clean Insitue | 1d | 2027-01-28 | 2027-01-28 | 130FF, 111, 125 | 0d |  |
| 132 | 1.6.3.5 | **Construction of Headwalls Outlet** | 15d | 2027-01-05 | 2027-01-26 |  | 7d |  |
| 133 | 1.6.3.5.1 | **Headworks Head work Layer works** | 2d | 2027-01-05 | 2027-01-06 |  | 7d |  |
| 134 | 1.6.3.5.1.1 | Prepare layerworks for headwork | 2d | 2027-01-05 | 2027-01-06 | 75, 85FF, 95FF | 7d | 0d |
| 135 | 1.6.3.5.2 | **Headwall 1** | 8d | 2027-01-07 | 2027-01-19 |  | 7d |  |
| 136 | 1.6.3.5.2.1 | **Base** | 5d | 2027-01-07 | 2027-01-14 |  | 7d |  |
| 137 | 1.6.3.5.2.1.1 | Blinding | 1d | 2027-01-07 | 2027-01-07 | 134 | 7d | 0d |
| 138 | 1.6.3.5.2.1.2 | Rebar | 2d | 2027-01-08 | 2027-01-11 | 137, 38, 30FF | 7d | 0d |
| 139 | 1.6.3.5.2.1.3 | Formwork | 2d | 2027-01-08 | 2027-01-11 | 138SS, 134 | 7d | 0d |
| 140 | 1.6.3.5.2.1.4 | Concrete | 1d | 2027-01-12 | 2027-01-12 | 139 | 7d | 0d |
| 141 | 1.6.3.5.2.1.5 | Strip | 1d | 2027-01-14 | 2027-01-14 | 140 | 7d | 0d |

| ID | WBS | Task | Duration | Start | Finish | Predecessors | Total slack | Free slack |
| --- | --- | --- | --- | --- | --- | --- | --- | --- |
| 142 | 1.6.3.5.2.2 | **Wall** | 5d | 2027-01-12 | 2027-01-19 |  | 12d |  |
| 143 | 1.6.3.5.2.2.1 | Access scaffolding | 1d | 2027-01-14 | 2027-01-14 | 140 | 13d | 0d |
| 144 | 1.6.3.5.2.2.2 | Rebar | 2d | 2027-01-12 | 2027-01-14 | 138, 143FF, 39 | 13d | 1d |
| 145 | 1.6.3.5.2.2.3 | Formwork | 2d | 2027-01-14 | 2027-01-15 | 144FF, 140 | 12d | 0d |
| 146 | 1.6.3.5.2.2.4 | Concrete | 1d | 2027-01-18 | 2027-01-18 | 145 | 12d | 0d |
| 147 | 1.6.3.5.2.2.5 | Strip | 1d | 2027-01-19 | 2027-01-19 | 146 | 12d | 5d |
| 148 | 1.6.3.5.3 | **Headwall 2** | 10d | 2027-01-07 | 2027-01-21 |  | 10d |  |
| 149 | 1.6.3.5.3.1 | **Base** | 5d | 2027-01-07 | 2027-01-14 |  | 10d |  |
| 150 | 1.6.3.5.3.1.1 | Blinding | 1d | 2027-01-07 | 2027-01-07 | 134 | 10d | 0d |
| 151 | 1.6.3.5.3.1.2 | Rebar | 2d | 2027-01-08 | 2027-01-11 | 138FF, 150, 38 | 10d | 0d |
| 152 | 1.6.3.5.3.1.3 | Formwork | 2d | 2027-01-08 | 2027-01-11 | 151FF, 134 | 10d | 0d |
| 153 | 1.6.3.5.3.1.4 | Concrete | 1d | 2027-01-12 | 2027-01-12 | 152 | 14d | 0d |
| 154 | 1.6.3.5.3.1.5 | Strip | 1d | 2027-01-14 | 2027-01-14 | 153 | 14d |  |
| 155 | 1.6.3.5.3.2 | **Wall** | 7d | 2027-01-12 | 2027-01-21 |  | 10d |  |
| 156 | 1.6.3.5.3.2.1 | Access scaffolding | 1d | 2027-01-12 | 2027-01-12 | 152 | 10d | 0d |
| 157 | 1.6.3.5.3.2.2 | Rebar | 2d | 2027-01-14 | 2027-01-15 | 156, 138FF, 39 | 10d | 0d |
| 158 | 1.6.3.5.3.2.3 | Formwork | 2d | 2027-01-18 | 2027-01-19 | 157 | 10d | 0d |
| 159 | 1.6.3.5.3.2.4 | Concrete | 1d | 2027-01-20 | 2027-01-20 | 158 | 10d | 0d |
| 160 | 1.6.3.5.3.2.5 | Strip | 1d | 2027-01-21 | 2027-01-21 | 159 | 10d | 3d |
| 161 | 1.6.3.5.4 | **Headwall 3** | 12d | 2027-01-08 | 2027-01-26 |  | 7d |  |
| 162 | 1.6.3.5.4.1 | **Base** | 8d | 2027-01-08 | 2027-01-20 |  | 7d |  |
| 163 | 1.6.3.5.4.1.1 | Blinding | 1d | 2027-01-08 | 2027-01-08 | 134FS+1d | 8d | 0d |
| 164 | 1.6.3.5.4.1.2 | Rebar | 2d | 2027-01-11 | 2027-01-12 | 163, 138FF, 38 | 8d | 1d |
| 165 | 1.6.3.5.4.1.3 | Formwork | 2d | 2027-01-15 | 2027-01-18 | 164, 141 | 7d | 0d |
| 166 | 1.6.3.5.4.1.4 | Concrete | 1d | 2027-01-19 | 2027-01-19 | 165 | 7d | 0d |
| 167 | 1.6.3.5.4.1.5 | Strip | 1d | 2027-01-20 | 2027-01-20 | 166 | 7d | 0d |

| ID | WBS | Task | Duration | Start | Finish | Predecessors | Total slack | Free slack |
| --- | --- | --- | --- | --- | --- | --- | --- | --- |
| 168 | 1.6.3.5.4.2 | **Wall** | 5d | 2027-01-20 | 2027-01-26 |  | 7d |  |
| 169 | 1.6.3.5.4.2.1 | Access scaffolding | 1d | 2027-01-20 | 2027-01-20 | 166, 167FF | 7d | 0d |
| 170 | 1.6.3.5.4.2.2 | Rebar | 2d | 2027-01-21 | 2027-01-22 | 138FF, 169, 38 | 7d | 0d |
| 171 | 1.6.3.5.4.2.3 | Formwork | 2d | 2027-01-21 | 2027-01-22 | 170FF, 166 | 7d | 0d |
| 172 | 1.6.3.5.4.2.4 | Concrete | 1d | 2027-01-25 | 2027-01-25 | 171 | 7d | 0d |
| 173 | 1.6.3.5.4.2.5 | Strip | 1d | 2027-01-26 | 2027-01-26 | 172 | 7d | 0d |
| 174 | 1.6.3.6 | **Construction of Headwalls Inlets** | 16d | 2027-01-29 | 2027-02-23 |  | 0d |  |
| 175 | 1.6.3.6.1 | **Headworks Head work Layer works** | 2d | 2027-01-29 | 2027-02-01 |  | 0d |  |
| 176 | 1.6.3.6.1.1 | Prepare layerworks for headwork | 2d | 2027-01-29 | 2027-02-01 | 131, 111, 121 | 0d |  |
| 177 | 1.6.3.6.2 | **Headwall 1** | 14d | 2027-02-02 | 2027-02-23 |  | 0d |  |
| 178 | 1.6.3.6.2.1 | **Base** | 7d | 2027-02-02 | 2027-02-11 |  | 0d |  |
| 179 | 1.6.3.6.2.1.1 | Blinding | 1d | 2027-02-02 | 2027-02-02 | 176 | 0d |  |
| 180 | 1.6.3.6.2.1.2 | Rebar | 2d | 2027-02-04 | 2027-02-05 | 179, 38 | 0d |  |
| 181 | 1.6.3.6.2.1.3 | Formwork | 2d | 2027-02-08 | 2027-02-09 | 180, 154, 167, 176 | 0d |  |
| 182 | 1.6.3.6.2.1.4 | Concrete | 1d | 2027-02-10 | 2027-02-10 | 181 | 0d |  |
| 183 | 1.6.3.6.2.1.5 | Strip | 1d | 2027-02-11 | 2027-02-11 | 182 | 6d |  |
| 184 | 1.6.3.6.2.2 | **Wall** | 8d | 2027-02-11 | 2027-02-23 |  | 0d |  |
| 185 | 1.6.3.6.2.2.1 | Access scaffolding | 1d | 2027-02-11 | 2027-02-11 | 182 | 0d |  |
| 186 | 1.6.3.6.2.2.2 | Rebar | 2d | 2027-02-12 | 2027-02-15 | 179, 185, 39 | 0d |  |
| 187 | 1.6.3.6.2.2.3 | Formwork | 3d | 2027-02-16 | 2027-02-19 | 186, 182 | 0d |  |
| 188 | 1.6.3.6.2.2.4 | Concrete | 1d | 2027-02-22 | 2027-02-22 | 187 | 0d |  |
| 189 | 1.6.3.6.2.2.5 | Strip | 1d | 2027-02-23 | 2027-02-23 | 188, 183 | 0d |  |
| 190 | 1.6.3.6.3 | **Headwall 2** | 12d | 2027-02-02 | 2027-02-19 |  | 2d |  |
| 191 | 1.6.3.6.3.1 | **Base** | 6d | 2027-02-02 | 2027-02-10 |  | 2d |  |
| 192 | 1.6.3.6.3.1.1 | Blinding | 1d | 2027-02-02 | 2027-02-02 | 176, 179FF | 2d | 0d |
| 193 | 1.6.3.6.3.1.2 | Rebar | 2d | 2027-02-04 | 2027-02-05 | 192, 38 | 2d | 0d |
| 194 | 1.6.3.6.3.1.3 | Formwork | 2d | 2027-02-05 | 2027-02-08 | 193FF+1d, 176 | 2d | 0d |
| 195 | 1.6.3.6.3.1.4 | Concrete | 1d | 2027-02-09 | 2027-02-09 | 194 | 2d | 0d |
| 196 | 1.6.3.6.3.1.5 | Strip | 1d | 2027-02-10 | 2027-02-10 | 195 | 3d | 0d |

| ID | WBS | Task | Duration | Start | Finish | Predecessors | Total slack | Free slack |
| --- | --- | --- | --- | --- | --- | --- | --- | --- |
| 197 | 1.6.3.6.3.2 | **Walls** | 7d | 2027-02-10 | 2027-02-19 |  | 2d |  |
| 198 | 1.6.3.6.3.2.1 | Access scaffolding | 1d | 2027-02-10 | 2027-02-10 | 195 | 2d | 0d |
| 199 | 1.6.3.6.3.2.2 | Rebar | 2d | 2027-02-11 | 2027-02-12 | 179, 198, 39 | 2d | 0d |
| 200 | 1.6.3.6.3.2.3 | Formwork | 2d | 2027-02-15 | 2027-02-16 | 199FF+2d, 195 | 2d | 0d |
| 201 | 1.6.3.6.3.2.4 | Concrete | 1d | 2027-02-18 | 2027-02-18 | 200 | 2d | 0d |
| 202 | 1.6.3.6.3.2.5 | Strip | 1d | 2027-02-19 | 2027-02-19 | 201 | 2d |  |
| 203 | 1.6.3.6.4 | **Headwall 3** | 11d | 2027-02-02 | 2027-02-18 |  | 0d |  |
| 204 | 1.6.3.6.4.1 | **Base** | 7d | 2027-02-02 | 2027-02-11 |  | 0d |  |
| 205 | 1.6.3.6.4.1.1 | Blinding | 1d | 2027-02-02 | 2027-02-02 | 176, 179FF | 0d |  |
| 206 | 1.6.3.6.4.1.2 | Rebar | 2d | 2027-02-04 | 2027-02-05 | 179, 205, 38 | 0d |  |
| 207 | 1.6.3.6.4.1.3 | Formwork | 2d | 2027-02-05 | 2027-02-08 | 206FF+1d, 176 | 0d |  |
| 208 | 1.6.3.6.4.1.4 | Concrete | 1d | 2027-02-09 | 2027-02-09 | 207 | 0d |  |
| 209 | 1.6.3.6.4.1.5 | Strip | 1d | 2027-02-11 | 2027-02-11 | 208, 196 | 3d |  |
| 210 | 1.6.3.6.4.2 | **Walls** | 6d | 2027-02-10 | 2027-02-18 |  | 0d |  |
| 211 | 1.6.3.6.4.2.1 | Access scaffolding | 1d | 2027-02-10 | 2027-02-10 | 208 | 0d |  |
| 212 | 1.6.3.6.4.2.2 | Rebar | 2d | 2027-02-11 | 2027-02-12 | 179, 211, 39 | 0d |  |
| 213 | 1.6.3.6.4.2.3 | Formwork | 3d | 2027-02-11 | 2027-02-15 | 212FF+1d, 208 | 0d |  |
| 214 | 1.6.3.6.4.2.4 | Concrete | 1d | 2027-02-16 | 2027-02-16 | 213 | 0d |  |
| 215 | 1.6.3.6.4.2.5 | Strip | 1d | 2027-02-18 | 2027-02-18 | 214, 209 | 0d |  |
| 216 | 1.6.3.7 | **Layerworks for North Access Roads** | 5d | 2027-01-28 | 2027-02-04 |  | 7d |  |
| 217 | 1.6.3.7.1 | Import G5 fill material made & compacted 98% | 5d | 2027-01-28 | 2027-02-04 | 147, 160, 173 | 7d | 0d |
| 218 | 1.6.3.8 | **Divert Traffic on Northern Access Road** | 2d | 2027-02-05 | 2027-02-08 |  | 7d |  |
| 219 | 1.6.3.8.1 | Divert traffic on Northern Access Road | 2d | 2027-02-05 | 2027-02-08 | 217 | 7d |  |
| 220 | 1.6.4 | **Woodyard** | 42d | 2026-11-27 | 2027-02-25 |  | 0d |  |
| 221 | 1.6.4.1 | **Earthworks** | 9d | 2026-11-27 | 2026-12-11 |  | 29d |  |
| 222 | 1.6.4.1.1 | **Network 1** | 6d | 2026-11-27 | 2026-12-07 |  | 29d |  |
| 223 | 1.6.4.1.1.1 | **Earthwork** | 6d | 2026-11-27 | 2026-12-07 |  | 29d |  |
| 224 | 1.6.4.1.1.1.1 | Excavation trench | 1d | 2026-11-27 | 2026-11-27 | 7, 61 | 29d | 0d |
| 225 | 1.6.4.1.1.1.2 | Rip & re-compact 350 existing soil to 95% MODASHTO(trim & shape) | 1d | 2026-11-30 | 2026-11-30 | 224 | 30d | 0d |
| 226 | 1.6.4.1.1.1.3 | IMPORTED 200mm G2 layer Compacted to 98% MODAASHTO (trim & shape) | 2d | 2026-12-02 | 2026-12-03 | 225 | 31d | 0d |
| 227 | 1.6.4.1.1.1.4 | IMPORTED 200mm G2 layer Compacted to 98% MODAASHTO (trim & shape) | 2d | 2026-12-04 | 2026-12-07 | 226 | 31d | 1d |

| ID | WBS | Task | Duration | Start | Finish | Predecessors | Total slack | Free slack |
| --- | --- | --- | --- | --- | --- | --- | --- | --- |
| 228 | 1.6.4.1.2 | **Network 2** | 6d | 2026-11-30 | 2026-12-08 |  | 30d |  |
| 229 | 1.6.4.1.2.1 | **Earthwork** | 6d | 2026-11-30 | 2026-12-08 |  | 30d |  |
| 230 | 1.6.4.1.2.1.1 | Excavation trench | 1d | 2026-11-30 | 2026-11-30 | 224SS+1d | 30d | 0d |
| 231 | 1.6.4.1.2.1.2 | Rip & re-compact 350 existing soil to 95% MODASHTO(trim & shape) | 1d | 2026-12-02 | 2026-12-02 | 230, 225FF+1d | 30d | 0d |
| 232 | 1.6.4.1.2.1.3 | IMPORTED 200mm G2 layer Compacted to 98% MODAASHTO (trim & shape) | 2d | 2026-12-03 | 2026-12-04 | 231, 226FF | 30d | 0d |
| 233 | 1.6.4.1.2.1.4 | IMPORTED 200mm G2 layer Compacted to 98% MODAASHTO (trim & shape) | 2d | 2026-12-07 | 2026-12-08 | 232, 227FF | 30d | 1d |
| 234 | 1.6.4.1.3 | **Network 3** | 6d | 2026-12-03 | 2026-12-11 |  | 29d |  |
| 235 | 1.6.4.1.3.1 | **Earthwork** | 6d | 2026-12-03 | 2026-12-11 |  | 29d |  |
| 236 | 1.6.4.1.3.1.1 | Excavation trench | 1d | 2026-12-03 | 2026-12-03 | 224FS+2d | 29d | 0d |
| 237 | 1.6.4.1.3.1.2 | Rip & re-compact 350 existing soil to 95% MODASHTO(trim & shape) | 1d | 2026-12-04 | 2026-12-04 | 236, 231FF+1d | 29d | 0d |
| 238 | 1.6.4.1.3.1.3 | IMPORTED 200mm G2 layer Compacted to 98% MODAASHTO (trim & shape) | 2d | 2026-12-07 | 2026-12-08 | 237, 232FF+1d | 29d | 0d |
| 239 | 1.6.4.1.3.1.4 | IMPORTED 200mm G2 layer Compacted to 98% MODAASHTO (trim & shape) | 2d | 2026-12-10 | 2026-12-11 | 238, 233FF+1d | 29d |  |
| 240 | 1.6.4.2 | **Construction of Concrete V- Drains** | 7d | 2027-02-11 | 2027-02-22 |  | 0d |  |
| 241 | 1.6.4.2.1 | **Network 1** | 6d | 2027-02-11 | 2027-02-19 |  | 1d |  |
| 242 | 1.6.4.2.1.1 | Construct concrete panel 2500mm x 6100 panel | 6d | 2027-02-11 | 2027-02-19 | 227FF+1d, 224, 37, 182 | 1d |  |
| 243 | 1.6.4.2.2 | **Network 2** | 7d | 2027-02-11 | 2027-02-22 |  | 0d |  |
| 244 | 1.6.4.2.2.1 | Construct concrete panel 2500mm x 6100 panel | 7d | 2027-02-11 | 2027-02-22 | 233FF+2d, 230, 37, 182 | 0d |  |
| 245 | 1.6.4.2.3 | **Network 3** | 7d | 2027-02-11 | 2027-02-22 |  | 0d |  |
| 246 | 1.6.4.2.3.1 | Construct concrete panel 2500mm x 6100 panel | 7d | 2027-02-11 | 2027-02-22 | 239FF+2d, 236, 37, 182 | 0d |  |
| 247 | 1.6.4.3 | **External Works** | 2d | 2027-02-23 | 2027-02-25 |  | 0d |  |
| 248 | 1.6.4.3.1 | Network v-drain Joint Sealing silcone sikail-728L | 1d | 2027-02-23 | 2027-02-23 | 242, 244, 246 | 0d |  |
| 249 | 1.6.4.3.2 | Install Log & bark Screen for headwalls | 1d | 2027-02-25 | 2027-02-25 | 248, 42, 172 | 0d |  |
| 250 | 1.6.4.4 | **Provisional Sums** | 1d | 2027-02-25 | 2027-02-25 |  | 0d |  |
| 251 | 1.6.4.4.1 | Testing Stormwater lines | 1d | 2027-02-25 | 2027-02-25 | 189, 202, 215, 173, 160, 147, 244, 242, 246, 50 | 0d |  |

Notes:
- 242: Construct 3 to 4 panels / one panel is 3.92m3 / formwork is 4.335m2 - use 5 shutter hands to push production / Tie in (backfill)IMPORTED 200mm G2 layer Compacted to 98% MODAASHTO
- 244: Construct 3 to 4 panels / one panel is 3.92m3 / formwork is 4.335m2 - use 5 shutter hands to push production / Tie in (backfill)IMPORTED 200mm G2 layer Compacted to 98% MODAASHTO
- 246: Construct 3 to 4 panels / one panel is 3.92m3 / formwork is 4.335m2 - use 5 shutter hands to push production / Tie in (backfill)IMPORTED 200mm G2 layer Compacted to 98% MODAASHTO

| ID | WBS | Task | Type | Duration | Start | Finish | Predecessors | Total slack |
| --- | --- | --- | --- | --- | --- | --- | --- | --- |
| 252 | 1.6.5 | **Final** |  | 5d | 2027-02-19 | 2027-02-26 |  | 0d |
| 253 | 1.6.5.1 | Clean & Snag |  | 4d | 2027-02-19 | 2027-02-25 | 251FF, 173FF, 215, 45, 219 | 0d |
| 254 | 1.6.5.2 | Handover |  | 1d | 2027-02-26 | 2027-02-26 | 253, 249 | 0d |
| 255 | 1.6.5.3 | Final Completion | milestone | 0d | 2027-02-26 | 2027-02-26 | 254 | 0d |
| 256 | 1.6.5.4 | De-establishment |  | 3d | 2027-02-23 | 2027-02-26 | 255FF | 0d |
